# OpenModelica Backend Development

Schedule from GanttProject, 2012-06-01 to 2012-12-04.
OSMC
Backend Development Managment

## Calendars

- Project calendar: Mon-Fri working; Sat-Sun off.

## Resources

| Resource |
| --- |
| PeterF |
| Bernhard |
| Adrain |
| Martin |
| Per |
| Adeel |
| Willi |
| Jens |
| Mahder |
| Niklas |
| Lennart |
| Alachew |
| others |
| ??? |

## Schedule

| ID | WBS | Task | Duration | Start | Finish | Predecessors | Complete | Resources |
| --- | --- | --- | --- | --- | --- | --- | --- | --- |
| 1 | 1 | **Backend Design** | 33d | 2012-06-01 | 2012-07-17 |  |  |  |
| 2 | 1.1 | Tech. Documentation (draft) | 14d | 2012-06-01 | 2012-06-20 |  |  | Willi; Jens |
| 3 | 1.2 | Tech. Documentation (final) | 10d | 2012-06-21 | 2012-07-04 | 2 |  | Willi; Jens |
| 4 | 1.3 | Create ideal flow and data chart | 14d | 2012-06-21 | 2012-07-10 | 2 |  |  |
| 5 | 1.4 | Tech. Doc. simulation c-runtime | 3d | 2012-06-01 | 2012-06-05 |  |  | Willi |
| 6 | 1.5 | Tech. Doc. simulation cpp-runtime | 3d | 2012-06-01 | 2012-06-05 |  |  | Niklas |
| 7 | 1.6 | Design ideal flow and data document | 5d | 2012-07-11 | 2012-07-17 | 3, 4, 5, 6 |  | Willi; Jens; Niklas; Lennart; others |
| 8 | 2 | **Backend readability (Implmentation)** | 50d | 2012-06-01 | 2012-08-09 |  |  |  |
| 9 | 2.1 | Tearing as post-optim module | 2d | 2012-06-01 | 2012-06-04 |  |  | Jens |
| 10 | 2.2 | sparsity pattern as post-optim module | 2d | 2012-06-01 | 2012-06-04 |  |  | Willi |
| 11 | 2.3 | coloring as post-optim module | 2d | 2012-06-01 | 2012-06-04 |  |  | Willi |
| 12 | 2.4 | Restruct SImCode.mo and SIMCODE | 50d | 2012-06-01 | 2012-08-09 |  |  | Willi; Jens; Niklas; others |
| 13 | 2.5 | revise data-struct of the Incidence-Matrix | 3d | 2012-06-01 | 2012-06-05 |  |  | Jens |
| 14 | 2.6 | Merge differentiate Function | 10d | 2012-06-01 | 2012-06-14 |  |  |  |
| 15 | 3 | **Backend robustness and library support** | 60d | 2012-06-01 | 2012-08-23 |  |  |  |
| 16 | 3.1 | MultiBody library simulation | 15d | 2012-06-01 | 2012-06-21 |  |  | Jens |
| 17 | 3.2 | Figure out issues for simulate Media example | 5d | 2012-06-01 | 2012-06-07 |  |  | Willi |
| 18 | 3.3 | Make the Media library simulate | 15d | 2012-06-08 | 2012-06-28 | 17 |  | Willi |
| 19 | 3.4 | revise non-linear system handling | 10d | 2012-06-01 | 2012-06-14 |  |  | Willi |
| 20 | 3.5 | Figure out ThermoSysLib simulation issues | 3d | 2012-06-01 | 2012-06-05 |  | 30% | Willi |
| 21 | 3.6 | ThermoSysLib library simulation | 5d | 2012-06-06 | 2012-06-12 | 20 |  | Willi |
| 22 | 3.7 | solving stategie for algebraic loop involving integer | 60d | 2012-06-01 | 2012-08-23 |  |  | ??? |
| 23 | 3.8 | Make other MSL example model simulates | 1d | 2012-06-01 | 2012-06-01 |  |  | Willi |
| 24 | 3.9 | Find initialize issues for ThermoSys simulation | 25d | 2012-07-13 | 2012-08-16 | 28 |  | Willi [80%]; Lennart [20%] |
| 25 | 3.10 | Find initialize issues for MultiBody simulation | 10d | 2012-07-13 | 2012-07-26 | 28 |  | Willi [80%]; Lennart [20%] |

Notes:
- 1: Improve the readabilty of the code by / - restrukturing / - documentation / - reimplement prototype implementations
- 2: Creating a Tech. Documentation of the MetaModelica Backend with / - visual illustration flow chart / - and data flow
- 3: Creating a Tech. Documentation of the MetaModelica Backend with / - visual illustration flow chart / - and data flow
- 4: create or rather derive an ideal flow chart and data flow
- 7: search for potential improvements with created flow chart and data flow
- 14: Merge MetaModelica code of Derive.mo and symbolic Jacobian calculation

| ID | WBS | Task | Duration | Start | Finish | Predecessors | Complete | Resources |
| --- | --- | --- | --- | --- | --- | --- | --- | --- |
| 26 | 4 | **Backend performance** | 133d | 2012-06-01 | 2012-12-04 |  | 4% |  |
| 27 | 4.1 | Design and Implementation of a better tearing strategy | 40d | 2012-06-05 | 2012-07-30 | 9 |  | Bernhard; Willi; Jens |
| 28 | 4.2 | Improvement and Robostness of initialization | 30d | 2012-06-01 | 2012-07-12 |  |  | Lennart |
| 29 | 4.3 | Implement of Homotopy operator | 30d | 2012-06-01 | 2012-07-12 |  |  |  |
| 30 | 4.4 | Dynamic State Selection | 1d | 2012-06-01 | 2012-06-01 |  |  | Jens |
| 31 | 4.5 | Non-Expanded arrays | 100d | 2012-07-18 | 2012-12-04 | 7 |  |  |
| 32 | 4.6 | Compressed DASSL | 5d | 2012-06-05 | 2012-06-11 | 10, 11 |  | Willi |
| 33 | 4.7 | revise BackendDAEUtil.getSolvedSystem | 10d | 2012-06-01 | 2012-06-14 |  | 40% | Willi [50%]; Jens [50%] |
| 34 | 4.8 | reduce compile time of runtime | 5d | 2012-08-10 | 2012-08-16 | 12 |  | Willi; Jens |
| 35 | 5 | **Update FMI including co-simulation** | 55d | 2012-06-01 | 2012-08-16 |  |  |  |
| 36 | 5.1 | **FMI Comman Functionality** | 15d | 2012-06-01 | 2012-06-21 |  |  |  |
| 37 | 5.1.1 | Common header files, functions, platform depended definitions. | 5d | 2012-06-01 | 2012-06-07 |  |  | Adeel |
| 38 | 5.1.2 | XML parser, loading and validating the dynamic link library (dll/so). | 5d | 2012-06-08 | 2012-06-14 | 37 |  | Adeel |
| 39 | 5.1.3 | FMU Instances creation, logging. | 5d | 2012-06-15 | 2012-06-21 | 38 |  | Adeel |
| 40 | 5.2 | FMI-Unit for Co-Simulation | 7d | 2012-06-01 | 2012-06-11 |  |  | Willi |
| 41 | 5.3 | FMI 2.0 Implementation (partial prototype) | 30d | 2012-06-01 | 2012-07-12 |  |  | Adeel; Willi |
| 42 | 5.4 | FMI Master implementation (a) | 15d | 2012-06-22 | 2012-07-12 | 39, 40 |  | Adeel |
| 43 | 5.5 | FMI Master implementation (b) | 15d | 2012-07-13 | 2012-08-02 | 42 |  | Adeel [50%]; Willi [50%] |
| 44 | 5.6 | FMI Re-Implement FMI-Import for FMI1.0 Co-Simulation and FMI2.0 usage | 20d | 2012-06-01 | 2012-06-28 |  |  | Adeel |
| 45 | 5.7 | FMI Implementing communication algorithm between master and slaves. | 10d | 2012-08-03 | 2012-08-16 | 43 |  | Adeel [45%]; Willi [10%]; others [45%] |
| 46 | 6 | **Other Things** | 30d | 2012-06-01 | 2012-07-12 |  |  |  |
| 47 | 6.1 | Finalize prototype uncertainty | 10d | 2012-06-01 | 2012-06-14 |  |  | others |
| 48 | 6.2 | Extend Test suite | 30d | 2012-06-01 | 2012-07-12 |  |  | Alachew |

Notes:
- 33: functions expandDer, calculateValues, translateDAE, generateStatePartition, are slow or not well implementet....
- 42: Creating, initializing, terminating and destructing the slaves.
- 43: Performing the step with the respective solvers of the slaves.
